# 泰易淘平台项目业务梳理2015-01-28

Schedule from MS Project, 2015-01-09 to 2015-04-02.
Microsoft

## Calendars

- 标准: Mon-Fri 08:00-12:00, 13:00-17:00; Sat-Sun off. Exceptions (off unless hours are given): 2015-02-15 08:00-12:00, 13:00-17:00 (春节调整), 2015-02-18 to 2015-02-24 (春节), 2015-02-28 08:00-12:00, 13:00-17:00 (春节调整).

## Resources

| Resource |
| --- |
| 陈土勇 |
| 张年华 |
| 许金彪 |
| 周国胜 |
| 许丹霞 |
| 杨学勇 |
| 林虎 |
| 刘能 |
| 钟梓权 |
| 陆一峰 |
| 张婷婷 |
| 张春平 |
| 林韵婷 |
| 李贤棣 |
| 古文生 |
| 何万里 |

## Schedule

| ID | WBS | Task | Type | Duration | Start | Finish | Total slack | Constraint | Deadline | Resources | Work |
| --- | --- | --- | --- | --- | --- | --- | --- | --- | --- | --- | --- |
| 1 | 1 | **泰易淘平台项目进度计划** |  | 51.88d? | 2015-01-09 | 2015-03-26 | 0d |  |  | 许金彪 | 10220h |
| 2 | 1.1 | **业务梳理和流程测试** |  | 51.88d? | 2015-01-09 | 2015-03-26 | 0d |  |  |  | 9805h |
| 3 | 1.1.1 | **运营支撑中心** |  | 42d? | 2015-01-19 | 2015-03-20 | 0d |  |  | 张春平 | 1088h |
| 4 | 1.1.1.1 | 核对运营中心业务功能 | manual | 2d | 2015-01-19 | 2015-01-20 |  | finish no later than 2015-01-20 | 2015-01-20 | 张春平 | 16h |
| 5 | 1.1.1.2 | 制定功能测试计划 | manual | 2d | 2015-01-21 | 2015-01-23 |  | start no earlier than 2015-01-21 |  | 张春平 | 16h |
| 6 | 1.1.1.3 | 系统概要总结 | manual | 4d | 2015-01-23 | 2015-01-28 |  |  |  | 张春平 | 32h |
| 7 | 1.1.1.4 | 系统改版 | manual | 1d | 2015-01-29 | 2015-01-29 |  |  |  | 刘能; 张春平 | 16h |
| 8 | 1.1.1.5 | 熟悉代码框架 | manual | 3d | 2015-01-30 | 2015-02-03 |  |  |  | 刘能; 张春平 | 48h |
| 9 | 1.1.1.6 | 业务文档调整 | manual | 1d | 2015-02-04 | 2015-02-04 |  |  |  | 刘能 | 8h |
| 10 | 1.1.1.7 | **第一轮功能测试** |  | 9d | 2015-02-05 | 2015-02-17 |  |  |  | 张春平; 刘能 | 232h |
| 11 | 1.1.1.7.1 | 网站 | manual | 1d | 2015-02-05 | 2015-02-05 |  |  |  | 刘能 | 8h |
| 12 | 1.1.1.7.2 | 交易 | manual | 1d | 2015-02-06 | 2015-02-06 |  |  |  | 刘能 | 8h |
| 13 | 1.1.1.7.3 | 会员 | manual | 1d | 2015-02-09 | 2015-02-09 |  |  |  | 刘能 | 8h |
| 14 | 1.1.1.7.4 | 运营 | manual | 1d | 2015-02-10 | 2015-02-10 |  |  |  | 刘能 | 8h |
| 15 | 1.1.1.7.5 | 结算 | manual | 1d | 2015-02-11 | 2015-02-11 |  |  |  | 刘能 | 8h |
| 16 | 1.1.1.7.6 | 店铺 | manual | 1d | 2015-02-05 | 2015-02-05 |  |  |  | 张春平 | 8h |
| 17 | 1.1.1.7.7 | 商品 | manual | 1d | 2015-02-06 | 2015-02-06 |  |  |  | 张春平 | 8h |
| 18 | 1.1.1.7.8 | 设置 | manual | 1d | 2015-02-09 | 2015-02-09 |  |  |  | 张春平 | 8h |
| 19 | 1.1.1.7.9 | 自营 | manual | 1d | 2015-02-10 | 2015-02-10 |  |  |  | 张春平 | 8h |
| 20 | 1.1.1.7.10 | 首页 | manual | 1d | 2015-02-11 | 2015-02-11 |  |  |  | 张春平 | 8h |
| 21 | 1.1.1.7.11 | 工具 | manual | 1d | 2015-02-12 | 2015-02-12 |  |  |  | 张春平 | 8h |
| 22 | 1.1.1.8 | 系统维护升级 | manual | 3d | 2015-02-15 | 2015-02-17 |  |  |  | 张春平 | 24h |
| 23 | 1.1.1.9 | 第二轮功能测试 | manual | 19d | 2015-02-25 | 2015-03-20 |  | start no earlier than 2015-02-25 |  | 刘能; 张春平 | 304h |
| 24 | 1.1.1.10 | 完成系统业务文档 | milestone, manual | 0d | 2015-02-16 | 2015-02-16 |  | finish no later than 2015-02-16 |  |  |  |
| 25 | 1.1.1.11 | 全面测试 | manual | 7d? | 2015-02-25 | 2015-03-05 |  | start no earlier than 2015-02-25 |  | 刘能 | 56h |

Notes:
- 6: 输出《系统业务文档》、《系统总体规划》
- 24: 输出《详细业务文档》《系统测试周期评估文档》

| ID | WBS | Task | Type | Duration | Start | Finish | Total slack | Constraint | Deadline | Resources | Work |
| --- | --- | --- | --- | --- | --- | --- | --- | --- | --- | --- | --- |
| 26 | 1.1.2 | **商家中心** |  | 42d? | 2015-01-19 | 2015-03-20 | 0d |  |  | 陈土勇 | 769h |
| 27 | 1.1.2.1 | 核对商家中心业务功能 |  | 2d | 2015-01-19 | 2015-01-20 | 0d | finish no later than 2015-01-20 | 2015-01-20 | 陈土勇 | 16.5h |
| 28 | 1.1.2.2 | 制定功能测试计划 | manual | 2d | 2015-01-21 | 2015-01-22 |  | start no earlier than 2015-01-21 |  | 陈土勇 | 15.5h |
| 29 | 1.1.2.3 | 系统概要总结 | manual | 4.12d | 2015-01-23 | 2015-01-28 |  |  |  | 陈土勇 | 33h |
| 30 | 1.1.2.4 | 系统改版 | manual | 1d | 2015-01-29 | 2015-01-29 |  |  |  | 陈土勇 | 16h |
| 31 | 1.1.2.5 | 熟悉代码框架 | manual | 3d | 2015-01-30 | 2015-02-03 |  |  |  | 陈土勇 | 24h |
| 32 | 1.1.2.6 | 业务文档调整 | manual | 1d | 2015-02-04 | 2015-02-04 |  |  |  | 陈土勇 | 8h |
| 33 | 1.1.2.7 | **第一轮功能测试** |  | 7d | 2015-02-05 | 2015-02-13 |  |  |  | 陈土勇 | 112h |
| 34 | 1.1.2.7.1 | 商品管理 | manual | 1d | 2015-02-05 | 2015-02-05 |  |  |  | 陈土勇 | 8h |
| 35 | 1.1.2.7.2 | 交易管理 | manual | 1d | 2015-02-06 | 2015-02-06 |  |  |  | 陈土勇 | 8h |
| 36 | 1.1.2.7.3 | 我的店铺 | manual | 1d | 2015-02-09 | 2015-02-09 |  |  |  | 陈土勇 | 8h |
| 37 | 1.1.2.7.4 | 促销推广 | manual | 1d | 2015-02-10 | 2015-02-10 |  |  |  | 陈土勇 | 8h |
| 38 | 1.1.2.7.5 | 结算管理 | manual | 1d | 2015-02-11 | 2015-02-11 |  |  |  | 陈土勇 | 8h |
| 39 | 1.1.2.7.6 | 客户服务 | manual | 1d | 2015-02-12 | 2015-02-12 |  |  |  | 陈土勇 | 8h |
| 40 | 1.1.2.7.7 | 其他管理 | manual | 1d | 2015-02-13 | 2015-02-13 |  |  |  | 陈土勇 | 8h |
| 41 | 1.1.2.8 | 第二轮功能测试 | manual | 19d | 2015-02-25 | 2015-03-20 |  | start no earlier than 2015-02-25 |  | 陈土勇 | 152h |
| 42 | 1.1.2.9 | 完成系统业务文档 | milestone, manual | 0d | 2015-02-16 | 2015-02-16 |  | finish no later than 2015-02-16 |  | 陈土勇 |  |
| 43 | 1.1.2.10 | 全面测试 | manual | 7d? | 2015-02-25 | 2015-03-05 |  | start no earlier than 2015-02-25 |  | 陈土勇 | 56h |
| 44 | 1.1.3 | **泰易淘商城** |  | 42d? | 2015-01-19 | 2015-03-20 | 0d |  |  | 杨学勇; 张年华; 钟梓权 | 1984h |
| 45 | 1.1.3.1 | 核对商城业务功能 | manual | 2d? | 2015-01-19 | 2015-01-20 |  | finish no later than 2015-01-20 | 2015-01-20 | 杨学勇; 张年华; 钟梓权 | 48h |
| 46 | 1.1.3.2 | 制定功能测试计划 | manual | 2d | 2015-01-21 | 2015-01-22 |  | start no earlier than 2015-01-21 |  | 杨学勇; 张年华; 钟梓权 | 48h |
| 47 | 1.1.3.3 | 系统概要总结 | manual | 1d | 2015-01-23 | 2015-01-23 |  |  |  | 杨学勇; 张年华; 钟梓权 | 24h |
| 48 | 1.1.3.4 | 业务核对 | manual | 3d | 2015-01-24 | 2015-01-27 |  |  |  | 林虎; 杨学勇; 张年华; 钟梓权 | 96h |
| 49 | 1.1.3.5 | **第一阶段** |  | 17d | 2015-01-28 | 2015-02-18 |  |  |  | 张年华 | 496h |
| 50 | 1.1.3.5.1 | 开发框架熟悉 | manual | 4d | 2015-01-28 | 2015-02-03 |  |  |  | 林虎; 杨学勇; 钟梓权; 张年华 | 128h |
| 51 | 1.1.3.5.2 | 界面国际化方案设计 | manual | 2d | 2015-02-04 | 2015-02-06 |  |  |  | 林虎; 杨学勇; 张年华 | 48h |
| 52 | 1.1.3.5.3 | 前端页面调整方案设计 | manual | 2d | 2015-02-04 | 2015-02-06 |  |  |  | 张婷婷; 张年华 | 32h |
| 53 | 1.1.3.5.4 | 首页界面调整 | manual | 7d | 2015-02-09 | 2015-02-16 |  |  |  | 钟梓权; 张年华 | 112h |
| 54 | 1.1.3.5.5 | 会员国际化 | manual | 5d | 2015-02-09 | 2015-02-13 |  |  |  | 杨学勇 | 40h |
| 55 | 1.1.3.6 | 第二阶段 | manual | 19d | 2015-02-25 | 2015-03-20 |  | start no earlier than 2015-02-25 |  | 张年华 | 152h |
| 56 | 1.1.3.7 | 完成系统业务文档 | milestone, manual | 0d | 2015-02-16 | 2015-02-16 |  | finish no later than 2015-02-16 |  |  |  |
| 57 | 1.1.3.8 | 全面测试 | manual | 7d? | 2015-02-25 | 2015-03-05 |  | start no earlier than 2015-02-25 |  | 杨学勇; 张年华 | 112h |

Notes:
- 29: 输出《系统业务文档》、《系统总体规划》
- 42: 输出《详细业务文档》《系统测试周期评估文档》
- 47: 输出《系统业务文档》、《系统总体规划》
- 56: 输出《详细业务文档》《系统测试周期评估文档》

| ID | WBS | Task | Type | Duration | Start | Finish | Total slack | Constraint | Deadline | Resources | Work |
| --- | --- | --- | --- | --- | --- | --- | --- | --- | --- | --- | --- |
| 58 | 1.1.4 | **用户中心** |  | 47.88d? | 2015-01-09 | 2015-03-20 | 0d |  |  | 林虎 | 927h |
| 59 | 1.1.4.1 | 核对用户中心业务功能 | manual | 2d | 2015-01-19 | 2015-01-20 |  | finish no later than 2015-01-20 | 2015-01-20 | 林虎 | 16h |
| 60 | 1.1.4.2 | 制定功能测试计划 | manual | 2d | 2015-01-21 | 2015-01-23 |  | start no earlier than 2015-01-21 |  | 林虎 | 16h |
| 61 | 1.1.4.3 | 系统概要总结 | manual | 3d | 2015-01-23 | 2015-01-27 |  |  |  |  | 24h |
| 62 | 1.1.4.4 | **第一阶段** |  | 30d | 2015-01-09 | 2015-02-18 |  |  |  | 林虎 | 280h |
| 63 | 1.1.4.4.1 | 用户中心国际化 | manual | 5d | 2015-02-09 | 2015-02-13 |  |  |  | 林虎 | 40h |
| 64 | 1.1.4.5 | 第二阶段 | manual | 19d | 2015-02-25 | 2015-03-20 |  | start no earlier than 2015-02-25 |  | 林虎 | 152h |
| 65 | 1.1.4.6 | 完成系统业务文档 | milestone, manual | 0d | 2015-02-16 | 2015-02-16 |  | finish no later than 2015-02-16 |  |  |  |
| 66 | 1.1.4.7 | 全面测试 | manual | 7d? | 2015-02-25 | 2015-03-05 |  | start no earlier than 2015-02-25 |  | 林虎 | 56h |
| 67 | 1.1.5 | **移动客户端** |  | 21d | 2015-01-18 | 2015-02-15 | 6.12d |  |  | 陆一峰 | 734h |
| 68 | 1.1.5.1 | **第一阶段** |  | 14.88d | 2015-01-27 | 2015-02-15 | 0d |  |  | 林虎; 陆一峰 | 566h |
| 69 | 1.1.5.1.1 | APP 界面设计 | manual | 12d | 2015-01-27 | 2015-02-11 |  | start no earlier than 2015-01-27 | 2015-03-20 | 林韵婷 | 96h |
| 70 | 1.1.5.1.2 | 界面国际化 (Android) | manual | 5d | 2015-01-27 | 2015-02-01 |  |  |  | 林虎 | 40h |
| 71 | 1.1.5.1.3 | 界面国际化 (IOS) | manual | 5d | 2015-01-27 | 2015-02-01 |  |  |  | 陆一峰 | 40h |
| 72 | 1.1.5.1.4 | 界面调整 (Android) | manual | 5d | 2015-02-02 | 2015-02-06 |  |  |  | 林虎 | 40h |
| 73 | 1.1.5.1.5 | 界面调整 (IOS) | manual | 5d | 2015-02-02 | 2015-02-06 |  |  |  | 陆一峰 | 40h |
| 74 | 1.1.5.1.6 | 对接支付接口 (Android) | manual | 3d | 2015-02-09 | 2015-02-11 |  |  |  | 林虎 | 24h |
| 75 | 1.1.5.1.7 | 对接支付接口 (IOS) | manual | 3d | 2015-02-09 | 2015-02-11 |  |  |  | 陆一峰 | 24h |
| 76 | 1.1.5.1.8 | 后台调整 | manual | 3d | 2015-02-12 | 2015-02-15 |  |  |  | 陆一峰 | 24h |
| 77 | 1.1.5.2 | **第二阶段** |  | 0d | 2015-01-18 | 2015-01-18 | 46d |  |  | 林虎; 陆一峰 |  |
| 78 | 1.1.5.2.1 | 对接物流接口 (Android) | inactive, manual | 5d | 2015-02-25 | 2015-03-03 |  | start no earlier than 2015-02-25 |  | 林虎 | 40h |
| 79 | 1.1.5.2.2 | 对接物流接口 (IOS) | inactive, manual | 5d | 2015-02-25 | 2015-03-03 |  |  |  | 陆一峰 | 40h |
| 80 | 1.1.5.2.3 | 初始化数据 (Android) | inactive, manual | 1d | 2015-03-04 | 2015-03-04 |  |  |  | 林虎 | 8h |
| 81 | 1.1.5.2.4 | 初始化数据 (IOS) | inactive, manual | 1d | 2015-03-04 | 2015-03-04 |  |  |  | 陆一峰 | 8h |
| 82 | 1.1.5.2.5 | 测试 (Android) | inactive, manual | 3d | 2015-03-05 | 2015-03-09 |  |  |  | 林虎 | 24h |
| 83 | 1.1.5.2.6 | 测试 (IOS) | inactive, manual | 3d | 2015-03-05 | 2015-03-09 |  |  |  | 陆一峰 | 24h |
| 84 | 1.1.5.2.7 | Bug 修复 (Android) | inactive, manual | 2d | 2015-03-01 | 2015-03-01 |  | start no earlier than 2015-03-01 |  | 林虎 | 16h |
| 85 | 1.1.5.2.8 | Bug 修复 (IOS) | inactive, manual | 2d | 2015-03-01 | 2015-03-01 |  | start no earlier than 2015-03-01 |  | 陆一峰 | 16h |
| 86 | 1.1.5.2.9 | 中文版上线 (Android) | milestone, inactive, manual | 0d | 2015-03-02 | 2015-03-02 |  |  |  | 林虎 |  |
| 87 | 1.1.5.2.10 | 中文版上线 (IOS) | milestone, inactive, manual | 0d | 2015-03-02 | 2015-03-02 |  | start no earlier than 2015-03-02 |  | 陆一峰 |  |
| 88 | 1.1.5.2.11 | 泰文版上线 (Android) | inactive, manual | 1d | 2015-04-02 | 2015-04-02 |  |  |  | 林虎 | 8h |
| 89 | 1.1.5.2.12 | 泰文版上线 (IOS) | inactive, manual | 1d | 2015-04-02 | 2015-04-02 |  | start no earlier than 2015-04-02 |  | 陆一峰 | 8h |

Notes:
- 61: 输出《系统业务文档》、《系统总体规划》
- 65: 输出《详细业务文档》《系统测试周期评估文档》
- 79: 输出《系统业务文档》、《系统总体规划》
- 87: 输出《详细业务文档》《系统测试周期评估文档》

| ID | WBS | Task | Type | Duration | Start | Finish | Total slack | Constraint | Deadline | Resources | Work |
| --- | --- | --- | --- | --- | --- | --- | --- | --- | --- | --- | --- |
| 90 | 1.1.6 | **测试流程监控** |  | 41.88d? | 2015-01-19 | 2015-03-20 | 0d |  |  | 周国胜 | 3023h |
| 91 | 1.1.6.1 | 测试用例文档调整优化 | manual | 4d | 2015-01-19 | 2015-01-23 |  | start no earlier than 2015-01-19 | 2015-01-24 | 许丹霞 | 32h |
| 92 | 1.1.6.2 | 制定测试计划 | manual | 4d | 2015-01-19 | 2015-01-23 |  | start no earlier than 2015-01-19 |  | 周国胜 | 32h |
| 93 | 1.1.6.3 | 系统概要总结 | manual | 1d | 2015-01-23 | 2015-01-23 |  |  |  | 许丹霞; 周国胜 | 8h |
| 94 | 1.1.6.4 | **bug跟踪** |  | 37d | 2015-01-26 | 2015-03-20 |  |  |  | 许丹霞; 周国胜 | 2384h |
| 95 | 1.1.6.4.1 | BUG 收集 | manual | 6d | 2015-01-22 | 2015-01-29 |  |  |  | 周国胜 | 48h |
| 96 | 1.1.6.4.2 | BUG 跟踪 | manual | 37d | 2015-01-22 | 2015-03-18 |  |  |  | 周国胜; 许丹霞 | 592h |
| 97 | 1.1.6.4.3 | BUG 定级 | manual | 37d | 2015-01-22 | 2015-03-18 |  |  |  | 周国胜; 许丹霞 | 592h |
| 98 | 1.1.6.4.4 | 初始化数据模块调整 | manual | 3d | 2015-01-22 | 2015-01-26 |  |  |  | 周国胜 | 24h |
| 99 | 1.1.6.4.5 | 初始化数据文档编写 | manual | 4d | 2015-02-02 | 2015-02-06 |  |  |  | 周国胜; 许丹霞 | 64h |
| 100 | 1.1.6.4.6 | TYTSM 测试用例导出整理 | manual | 1d | 2015-01-22 | 2015-01-22 |  |  |  | 周国胜 | 8h |
| 101 | 1.1.6.4.7 | 测试用例调整 | manual | 8d | 2015-01-23 | 2015-02-03 |  |  |  | 周国胜; 许丹霞 | 128h |
| 102 | 1.1.6.4.8 | ISKYSHOP 测试用例录入 | manual | 10d | 2015-02-03 | 2015-02-15 |  |  |  | 周国胜; 许丹霞 | 160h |
| 103 | 1.1.6.4.9 | 运营中心需求文档校对 | manual | 5d | 2015-01-26 | 2015-01-30 |  |  |  | 周国胜 | 40h |
| 104 | 1.1.6.4.10 | 商家中心需求文档校对 | manual | 2d | 2015-01-26 | 2015-01-27 |  |  |  | 许丹霞 | 16h |
| 105 | 1.1.6.4.11 | 商城前台需求文档校对 | manual | 2d | 2015-01-28 | 2015-01-29 |  |  |  | 许丹霞 | 16h |
| 106 | 1.1.6.4.12 | 用户中心需求文档校对 | manual | 1d | 2015-01-30 | 2015-01-30 |  |  |  | 许丹霞 | 8h |
| 107 | 1.1.6.4.13 | 上传前台第一版界面测试 | manual | 2d | 2015-02-16 | 2015-02-17 |  |  |  | 许丹霞; 周国胜 | 32h |
| 108 | 1.1.6.4.14 | 商城前台国际化测试 | manual | 5d | 2015-03-06 | 2015-03-12 |  |  |  | 许丹霞 | 40h |
| 109 | 1.1.6.4.15 | 移动客户端国际化测试 | manual | 3d | 2015-03-06 | 2015-03-10 |  |  |  | 周国胜 | 24h |
| 110 | 1.1.6.5 | 总体业务流程图 | manual | 15d | 2015-01-26 | 2015-02-15 |  | start no earlier than 2015-01-26 |  | 周国胜 | 120h |
| 111 | 1.1.6.6 | 完成系统业务文档 | manual | 1d | 2015-02-16 | 2015-02-16 |  | finish no later than 2015-02-16 |  |  |  |
| 112 | 1.1.6.7 | 整理运营交付文档 | manual | 7d? | 2015-02-25 | 2015-03-05 |  | start no earlier than 2015-02-25 |  | 许丹霞; 周国胜 | 112h |
| 113 | 1.1.7 | 交付运营 | manual | 4d | 2015-03-23 | 2015-03-26 |  |  |  | 陈土勇; 林虎; 刘能; 陆一峰; 许丹霞; 许金彪; 杨学勇; 张年华; 钟梓权; 周国胜 | 320h |

Notes:
- 93: 输出《系统业务文档》、《系统总体规划》
- 111: 输出《详细业务文档》《系统测试周期评估文档》

| ID | WBS | Task | Type | Duration | Start | Finish | Resources | Work |
| --- | --- | --- | --- | --- | --- | --- | --- | --- |
| 114 | 1.1.8 | **申请CA认证** |  | 5d | 2015-01-26 | 2015-02-02 | 许金彪 | 80h |
| 115 | 1.1.8.1 | CA认证资料收集 | manual | 3d | 2015-01-26 | 2015-01-28 | 许金彪 | 24h |
| 116 | 1.1.8.2 | CA认证申请 | manual | 2d | 2015-01-29 | 2015-01-30 | 许金彪 | 16h |
| 117 | 1.1.9 | 推广QQ申请 | manual | 1d | 2015-01-28 | 2015-01-28 | 张年华 | 8h |
| 118 | 1.1.10 | QQ登陆接口申请 | manual | 2d | 2015-01-29 | 2015-01-30 | 张年华 | 16h |
| 119 | 1.1.11 | 新浪微博接口 | manual | 3d | 2015-02-02 | 2015-02-04 | 张年华 | 24h |
| 120 | 1.1.12 | 短信接口 | manual | 5d | 2015-02-02 | 2015-02-06 | 许金彪 | 40h |
| 121 | 1.1.13 | 快递100接口申请 | manual | 5d | 2015-02-02 | 2015-02-06 | 何万里 | 40h |
| 122 | 1.1.14 | **代码控制** |  | 3d | 2015-01-26 | 2015-01-28 | 李贤棣 | 168h |
| 123 | 1.1.14.1 | 项目分系统 | milestone, manual | 3d | 2015-01-26 | 2015-01-28 | 李贤棣 | 24h |
| 124 | 1.1.14.2 | svn权限控制 | manual | 1d | 2015-01-28 | 2015-01-28 | 张春平 | 8h |
| 125 | 1.1.14.3 | 动员大会 | manual | 1d | 2015-01-27 | 2015-01-27 | 陈土勇; 古文生; 何万里; 李贤棣; 林虎; 刘能; 陆一峰; 许丹霞; 许金彪; 杨学勇; 张春平; 张年华; 钟梓权; 周国胜 | 112h |
| 126 | 1.1.15 | 物流接口开发 | manual | 27d | 2015-02-09 | 2015-03-20 | 古文生; 何万里 | 432h |
| 127 | 1.1.16 | 性能测试 | manual | 19d | 2015-02-25 | 2015-03-20 | 陆一峰 | 152h |

Notes:
- 123: 交付分离系统代码
